# D10126532InitialPlan

Schedule from MS Project, 2013-06-03 to 2013-12-06, status date 2013-05-01, costs in €, A marks actual dates.
Microsoft

## Calendars

- Standard: Mon-Fri 08:00-12:00, 13:00-17:00; Sat-Sun off. Exceptions (off unless hours are given): 2013-08-05 (August Bank Holiday), 2013-10-28 (October Bank Holiday).

## Resources

| Resource | Unit | Rate |
| --- | --- | --- |
| John Warde |  | 38 |
| Gary Dolan |  | 45 |
| Michael McMorrow |  | 35 |
| Fergal Browne |  | 35 |
| Carmel Keegan |  | 32 |
| Elaine McLaughlin |  | 28 |
| Nadia Moloney |  | 38 |
| CSP Test Account | fixed rate hours | 0.05 |
| CSP Production Account | fixed rate hours | 0.5 |

## Schedule

| ID | WBS | Task | Type | Duration | Start | Finish | Predecessors | Complete | Remaining | Baseline start | Baseline finish | Baseline duration | Total slack | Resources | Work | Actual work | Cost | Baseline cost | Actual cost |
| --- | --- | --- | --- | --- | --- | --- | --- | --- | --- | --- | --- | --- | --- | --- | --- | --- | --- | --- | --- |
| 1 | 1 | **Project Planning** |  | 45d | 2013-06-03 A | 2013-08-02 |  | 83% | 7.5d | 2013-06-03 | 2013-08-01 | 44d | 88d |  | 34.5h | 26.5h | 1,339 | 1,339 | 1,007 |
| 2 | 1.1 | Project Charter Document |  | 2d | 2013-06-03 A | 2013-06-04 A |  | 100% |  | 2013-06-03 | 2013-06-04 | 2d |  | John Warde [50%] | 10.5h | 10.5h | 399 | 399 | 399 |
| 3 | 1.2 | Project Management Plan |  | 3d | 2013-06-05 A | 2013-06-07 A | 2 | 100% |  | 2013-06-05 | 2013-06-07 | 3d |  | John Warde [33.3%] | 16h | 16h | 608 | 608 | 608 |
| 4 | 1.3 | Project Initation Comlete | milestone | 0d | 2013-06-07 A | 2013-06-07 A | 3 | 100% |  | 2013-06-07 | 2013-06-07 | 0d |  |  |  |  |  |  |  |
| 5 | 1.4 | Project Review, Lessons Learned |  | 1d | 2013-08-02 | 2013-08-02 | 65 |  |  | 2013-08-01 | 2013-08-01 | 1d | 88d | John Warde [50%]; Gary Dolan [50%] | 8h |  | 332 | 332 |  |
| 6 | 2 | **Technical Product Design** |  | 8d | 2013-06-03 A | 2013-06-12 A |  | 100% |  | 2013-06-03 | 2013-06-12 | 8d |  |  | 214h | 214h | 8,020 | 8,020 | 8,020 |
| 7 | 2.1 | Requirements Gathering |  | 3d | 2013-06-03 A | 2013-06-05 A |  | 100% |  | 2013-06-03 | 2013-06-05 | 3d |  | Gary Dolan; John Warde [33.3%] | 32h | 32h | 1,384 | 1,384 | 1,384 |
| 8 | 2.2 | Software Architecture Design |  | 5d | 2013-06-06 A | 2013-06-12 A | 7 | 100% |  | 2013-06-06 | 2013-06-12 | 5d |  | Gary Dolan; Michael McMorrow | 80h | 80h | 3,200 | 3,200 | 3,200 |
| 9 | 2.3 | Cloud Infrastructure Design |  | 5d | 2013-06-06 A | 2013-06-12 A | 7 | 100% |  | 2013-06-06 | 2013-06-12 | 5d |  | Fergal Browne | 40h | 40h | 1,400 | 1,400 | 1,400 |
| 10 | 2.4 | Test Plan Design |  | 4d | 2013-06-06 A | 2013-06-11 A | 7 | 100% |  | 2013-06-06 | 2013-06-11 | 4d |  | Elaine McLaughlin | 32h | 32h | 896 | 896 | 896 |
| 11 | 2.5 | User Interface Design |  | 3d | 2013-06-06 A | 2013-06-10 A | 7 | 100% |  | 2013-06-06 | 2013-06-10 | 3d |  | Nadia Moloney; John Warde [17%] | 30h | 30h | 1,140 | 1,140 | 1,140 |
| 12 | 2.6 | Technical Design Documents Complete | milestone | 0d | 2013-06-12 A | 2013-06-12 A | 8 | 100% |  | 2013-06-12 | 2013-06-12 | 0d |  |  |  |  |  |  |  |
| 13 | 3 | **Technical Implementation** |  | 36d | 2013-06-13 A | 2013-08-01 A |  | 100% |  | 2013-06-13 | 2013-08-01 | 35.5d |  |  | 814.9h | 814.9h | 30,199.58 | 29,807.58 | 30,199.58 |
| 14 | 3.1 | **Sprint 1** |  | 6d | 2013-06-13 A | 2013-06-20 A |  | 100% |  | 2013-06-13 | 2013-06-20 | 6d |  |  | 145.6h | 145.6h | 5,398 | 5,398 | 5,398 |
| 15 | 3.1.1 | Sprint Plan |  | 0.5d | 2013-06-13 A | 2013-06-13 A | 8 | 100% |  | 2013-06-13 | 2013-06-13 | 0.5d |  | John Warde; Gary Dolan | 8h | 8h | 332 | 332 | 332 |
| 16 | 3.1.2 | Implement Architecture Framework |  | 5d | 2013-06-13 A | 2013-06-20 A | 15 | 100% |  | 2013-06-13 | 2013-06-20 | 5d |  | Gary Dolan | 40h | 40h | 1,800 | 1,800 | 1,800 |
| 17 | 3.1.3 | Code Database Schema & Initial data |  | 2d | 2013-06-13 A | 2013-06-17 A | 15 | 100% |  | 2013-06-13 | 2013-06-17 | 2d |  | Michael McMorrow | 16h | 16h | 560 | 560 | 560 |
| 18 | 3.1.4 | Integrate OAuth for Authentication |  | 2d | 2013-06-17 A | 2013-06-19 A | 17 | 100% |  | 2013-06-17 | 2013-06-19 | 2d |  | Michael McMorrow; CSP Test Account [16 fixed rate hours] | 16h | 16h | 560.8 | 560.8 | 560.8 |
| 19 | 3.1.5 | Login page & dummy landing page with basic user info |  | 1d | 2013-06-19 A | 2013-06-20 A | 18 | 100% |  | 2013-06-19 | 2013-06-20 | 1d |  | Michael McMorrow; CSP Test Account [8 fixed rate hours] | 8h | 8h | 280.4 | 280.4 | 280.4 |
| 20 | 3.1.6 | Develop automated tests for sprint |  | 2d | 2013-06-13 A | 2013-06-17 A | 15 | 100% |  | 2013-06-13 | 2013-06-17 | 2d |  | Elaine McLaughlin | 24h | 24h | 672 | 672 | 672 |
| 21 | 3.1.7 | Develop Deployment Script for test Environment |  | 2d | 2013-06-13 A | 2013-06-17 A | 15 | 100% |  | 2013-06-13 | 2013-06-17 | 2d |  | Fergal Browne; CSP Test Account [16 fixed rate hours] | 20h | 20h | 700.8 | 700.8 | 700.8 |
| 22 | 3.1.8 | Release Sprint | milestone | 0d | 2013-06-20 A | 2013-06-20 A | 16 | 100% |  | 2013-06-20 | 2013-06-20 | 0d |  |  |  |  |  |  |  |
| 23 | 3.1.9 | Sprint Review & Improve Process |  | 0.5d | 2013-06-20 A | 2013-06-20 A | 22 | 100% |  | 2013-06-20 | 2013-06-20 | 0.5d |  | Gary Dolan [60%]; Michael McMorrow [60%]; Fergal Browne [60%]; Carmel Keegan [60%]; Elaine McLaughlin [60%] | 13.6h | 13.6h | 492 | 492 | 492 |
| 24 | 3.2 | **Sprint 2** |  | 6d | 2013-06-21 A | 2013-06-28 A |  | 100% |  | 2013-06-21 | 2013-06-28 | 6d |  |  | 169.6h | 169.6h | 6,125.6 | 6,125.6 | 6,125.6 |
| 25 | 3.2.1 | Sprint Plan |  | 0.5d | 2013-06-21 A | 2013-06-21 A | 23 | 100% |  | 2013-06-21 | 2013-06-21 | 0.5d |  | John Warde; Gary Dolan | 8h | 8h | 332 | 332 | 332 |
| 26 | 3.2.2 | Implement Thesaurus Service Plugin |  | 3d | 2013-06-21 A | 2013-06-26 A | 25 | 100% |  | 2013-06-21 | 2013-06-26 | 3d |  | Gary Dolan; CSP Test Account [12 fixed rate hours] | 24h | 24h | 1,080.6 | 1,080.6 | 1,080.6 |
| 27 | 3.2.3 | Code Main HTML5/jQuery page |  | 2d | 2013-06-21 A | 2013-06-25 A | 25 | 100% |  | 2013-06-21 | 2013-06-25 | 2d |  | Michael McMorrow; CSP Test Account [8 fixed rate hours] | 16h | 16h | 560.4 | 560.4 | 560.4 |
| 28 | 3.2.4 | Integrate Thesaurus Data with HTML/jQuery |  | 1d | 2013-06-26 A | 2013-06-27 A | 26 | 100% |  | 2013-06-26 | 2013-06-27 | 1d |  | Gary Dolan; CSP Test Account [6 fixed rate hours] | 8h | 8h | 360.3 | 360.3 | 360.3 |
| 29 | 3.2.5 | iOS App: Login Page + Thesaurus Integration |  | 4d | 2013-06-21 A | 2013-06-27 A | 25 | 100% |  | 2013-06-21 | 2013-06-27 | 4d |  | Carmel Keegan | 32h | 32h | 1,024 | 1,024 | 1,024 |
| 30 | 3.2.6 | Bug Fixes from previous sprint |  | 1d | 2013-06-27 A | 2013-06-28 A | 27, 28 | 100% |  | 2013-06-27 | 2013-06-28 | 1d |  | Gary Dolan; Michael McMorrow; CSP Test Account [6 fixed rate hours] | 16h | 16h | 640.3 | 640.3 | 640.3 |
| 31 | 3.2.7 | Develop deployment script for production |  | 3d | 2013-06-21 A | 2013-06-26 A | 25 | 100% |  | 2013-06-21 | 2013-06-26 | 3d |  | Fergal Browne; CSP Production Account [24 fixed rate hours] | 24h | 24h | 852 | 852 | 852 |
| 32 | 3.2.8 | Develop automated test for sprint |  | 3d | 2013-06-21 A | 2013-06-26 A | 25 | 100% |  | 2013-06-21 | 2013-06-26 | 3d |  | Elaine McLaughlin | 28h | 28h | 784 | 784 | 784 |
| 33 | 3.2.9 | Release Sprint | milestone | 0d | 2013-06-28 A | 2013-06-28 A | 30 | 100% |  | 2013-06-28 | 2013-06-28 | 0d |  |  |  |  |  |  |  |
| 34 | 3.2.10 | Sprint Review & Improve Process |  | 0.5d | 2013-06-28 A | 2013-06-28 A | 33 | 100% |  | 2013-06-28 | 2013-06-28 | 0.5d |  | Gary Dolan [60%]; Michael McMorrow [60%]; Fergal Browne [60%]; Carmel Keegan [60%]; Elaine McLaughlin [60%] | 13.6h | 13.6h | 492 | 492 | 492 |

| ID | WBS | Task | Type | Duration | Start | Finish | Predecessors | Complete | Baseline start | Baseline finish | Baseline duration | Resources | Work | Actual work | Cost | Baseline cost | Actual cost |
| --- | --- | --- | --- | --- | --- | --- | --- | --- | --- | --- | --- | --- | --- | --- | --- | --- | --- |
| 35 | 3.3 | **Sprint 3** |  | 7d | 2013-07-01 A | 2013-07-09 A |  | 100% | 2013-07-01 | 2013-07-09 | 7d |  | 120h | 120h | 4,380.68 | 4,380.68 | 4,380.68 |
| 36 | 3.3.1 | Sprint Plan |  | 0.5d | 2013-07-01 A | 2013-07-01 A | 34 | 100% | 2013-07-01 | 2013-07-01 | 0.5d | John Warde; Gary Dolan | 8h | 8h | 332 | 332 | 332 |
| 37 | 3.3.2 | Integrate SEO Ad Campaign Framework |  | 1d | 2013-07-01 A | 2013-07-02 A | 36 | 100% | 2013-07-01 | 2013-07-02 | 1d | Michael McMorrow; CSP Production Account [4 fixed rate hours]; CSP Test Account [4 fixed rate hours] | 8h | 8h | 282.2 | 282.2 | 282.2 |
| 38 | 3.3.3 | Code Domain Name Availabity Module |  | 4d | 2013-07-01 A | 2013-07-05 A | 36 | 100% | 2013-07-01 | 2013-07-05 | 4d | Gary Dolan; CSP Test Account [16 fixed rate hours]; CSP Production Account [0.16 fixed rate hours] | 32h | 32h | 1,440.88 | 1,440.88 | 1,440.88 |
| 39 | 3.3.4 | iOS App: Integration with SEO, Domain Name availability |  | 3d | 2013-07-02 A | 2013-07-05 A | 38SS+1d | 100% | 2013-07-02 | 2013-07-05 | 3d | Carmel Keegan | 28h | 28h | 896 | 896 | 896 |
| 40 | 3.3.5 | Bug Fixes from previous sprint |  | 2d | 2013-07-05 A | 2013-07-09 A | 38 | 100% | 2013-07-05 | 2013-07-09 | 2d | Michael McMorrow; CSP Test Account [8 fixed rate hours] | 16h | 16h | 560.4 | 560.4 | 560.4 |
| 41 | 3.3.6 | Develop automated test for sprint |  | 2d | 2013-07-01 A | 2013-07-03 A | 36 | 100% | 2013-07-01 | 2013-07-03 | 2d | Elaine McLaughlin; CSP Test Account [24 fixed rate hours] | 16h | 16h | 449.2 | 449.2 | 449.2 |
| 42 | 3.3.7 | Release Sprint | milestone | 0d | 2013-07-09 A | 2013-07-09 A | 40 | 100% | 2013-07-09 | 2013-07-09 | 0d |  |  |  |  |  |  |
| 43 | 3.3.8 | Sprint Review & Improve Process |  | 0.5d | 2013-07-09 A | 2013-07-09 A | 42 | 100% | 2013-07-09 | 2013-07-09 | 0.5d | Gary Dolan [60%]; Michael McMorrow [60%]; Fergal Browne [60%]; Carmel Keegan [60%]; Elaine McLaughlin [60%] | 12h | 12h | 420 | 420 | 420 |
| 44 | 3.4 | **Sprint 4** |  | 6d | 2013-07-10 A | 2013-07-17 A |  | 100% | 2013-07-10 | 2013-07-17 | 6d |  | 124h | 124h | 4,588.8 | 4,196.8 | 4,588.8 |
| 45 | 3.4.1 | Sprint Plan |  | 0.5d | 2013-07-10 A | 2013-07-10 A | 43 | 100% | 2013-07-10 | 2013-07-10 | 0.5d | John Warde; Gary Dolan | 8h | 8h | 332 | 332 | 332 |
| 46 | 3.4.2 | Code Social Real Estate Availability Module |  | 3d | 2013-07-10 A | 2013-07-15 A | 45 | 100% | 2013-07-10 | 2013-07-15 | 3d | Gary Dolan; Michael McMorrow; CSP Test Account [72 fixed rate hours] | 48h | 48h | 1,923.6 | 1,923.6 | 1,923.6 |
| 47 | 3.4.3 | iOS App: Social Real Estate Integration |  | 2d | 2013-07-11 A | 2013-07-12 A | 45SS+1d | 100% | 2013-07-11 | 2013-07-12 | 2d | Carmel Keegan | 16h | 16h | 512 | 512 | 512 |
| 48 | 3.4.4 | Develop automated test for sprint |  | 3d | 2013-07-10 A | 2013-07-15 A | 45 | 100% | 2013-07-10 | 2013-07-12 | 2d | Elaine McLaughlin; CSP Test Account [16 fixed rate hours]; Fergal Browne [85%]; Michael McMorrow [15%] | 24h | 24h | 840.8 | 448.8 | 840.8 |
| 49 | 3.4.5 | Bug Fixes from previous sprint |  | 2d | 2013-07-15 A | 2013-07-17 A | 46 | 100% | 2013-07-15 | 2013-07-17 | 2d | Michael McMorrow; CSP Test Account [8 fixed rate hours] | 16h | 16h | 560.4 | 560.4 | 560.4 |
| 50 | 3.4.6 | Release Sprint | milestone | 0d | 2013-07-17 A | 2013-07-17 A | 49 | 100% | 2013-07-17 | 2013-07-17 | 0d |  |  |  |  |  |  |
| 51 | 3.4.7 | Sprint Review & Improve Process |  | 0.5d | 2013-07-17 A | 2013-07-17 A | 50 | 100% | 2013-07-17 | 2013-07-17 | 0.5d | Gary Dolan [60%]; Michael McMorrow [60%]; Fergal Browne [60%]; Carmel Keegan [60%]; Elaine McLaughlin [60%] | 12h | 12h | 420 | 420 | 420 |
| 52 | 3.5 | **Sprint 5** |  | 6d | 2013-07-18 A | 2013-07-25 A |  | 100% | 2013-07-18 | 2013-07-24 | 5d |  | 135.1h | 135.1h | 4,999.5 | 4,999.5 | 4,999.5 |
| 53 | 3.5.1 | Sprint Plan |  | 0.5d | 2013-07-18 A | 2013-07-18 A | 51 | 100% | 2013-07-18 | 2013-07-18 | 0.5d | John Warde; Gary Dolan | 6h | 6h | 242 | 242 | 242 |
| 54 | 3.5.2 | Bug Fixes from previous sprint |  | 2d | 2013-07-18 A | 2013-07-22 A | 53 | 100% | 2013-07-18 | 2013-07-22 | 2d | Gary Dolan; Michael McMorrow; CSP Test Account [12 fixed rate hours] | 18h | 18h | 715.6 | 715.6 | 715.6 |
| 55 | 3.5.3 | Test scale-out (stress test) |  | 2d | 2013-07-19 A | 2013-07-23 A | 53FS+1d | 100% | 2013-07-18 | 2013-07-22 | 2d | Fergal Browne; Elaine McLaughlin; Gary Dolan; Michael McMorrow; CSP Production Account [96 fixed rate hours] | 50.5h | 50.5h | 1,798.5 | 1,798.5 | 1,798.5 |
| 56 | 3.5.4 | Bug Fixing from scale-out testing |  | 2d | 2013-07-23 A | 2013-07-25 A | 55 | 100% | 2013-07-22 | 2013-07-24 | 2d | Gary Dolan; Michael McMorrow; CSP Test Account [8 fixed rate hours]; CSP Production Account [8 fixed rate hours] | 32h | 32h | 1,284.4 | 1,284.4 | 1,284.4 |
| 57 | 3.5.5 | iOS App: Final Integration and bug fixing |  | 2d | 2013-07-18 A | 2013-07-22 A | 53 | 100% | 2013-07-18 | 2013-07-22 | 2d | Carmel Keegan | 16h | 16h | 512 | 512 | 512 |
| 58 | 3.5.6 | Release Sprint | milestone | 0d | 2013-07-25 A | 2013-07-25 A | 56 | 100% | 2013-07-24 | 2013-07-24 | 0d |  |  |  |  |  |  |
| 59 | 3.5.7 | Sprint Review & Improve Process |  | 0.5d | 2013-07-25 A | 2013-07-25 A | 58 | 100% | 2013-07-24 | 2013-07-24 | 0.5d | Gary Dolan [60%]; Michael McMorrow [60%]; Fergal Browne [60%]; Carmel Keegan [60%]; Elaine McLaughlin [60%] | 12.6h | 12.6h | 447 | 447 | 447 |
| 60 | 3.6 | Release to Market (Go Live) | milestone | 0d | 2013-07-25 A | 2013-07-25 A | 59 | 100% | 2013-07-24 | 2013-07-24 | 0d |  |  |  |  |  |  |

Notes:
- 55: Scale out testing will test the web application to double it expected maxium capacity, hence the 4 x 24 hours unit cost rate for 2 days testing

| ID | WBS | Task | Type | Duration | Start | Finish | Predecessors | Complete | Baseline start | Baseline finish | Baseline duration | Total slack | Resources | Work | Actual work | Cost | Baseline cost | Actual cost |
| --- | --- | --- | --- | --- | --- | --- | --- | --- | --- | --- | --- | --- | --- | --- | --- | --- | --- | --- |
| 61 | 3.7 | **Sprint 6** |  | 5d | 2013-07-26 A | 2013-08-01 A |  | 100% | 2013-07-25 | 2013-07-31 | 5d |  |  | 120.6h | 120.6h | 4,503 | 4,503 | 4,503 |
| 62 | 3.7.1 | Sprint Plan |  | 0.5d | 2013-07-26 A | 2013-07-26 A | 60 | 100% | 2013-07-25 | 2013-07-25 | 0.5d |  | John Warde; Gary Dolan | 8h | 8h | 332 | 332 | 332 |
| 63 | 3.7.2 | Post Live Bug Fixing |  | 4d | 2013-07-26 A | 2013-08-01 A | 62 | 100% | 2013-07-25 | 2013-07-31 | 4d |  | Gary Dolan; Michael McMorrow; Carmel Keegan | 100h | 100h | 3,724 | 3,724 | 3,724 |
| 64 | 3.7.3 | Release Sprint | milestone | 0d | 2013-08-01 A | 2013-08-01 A | 63 | 100% | 2013-07-31 | 2013-07-31 | 0d |  |  |  |  |  |  |  |
| 65 | 3.7.4 | Sprint Review & Improve Process |  | 0.5d | 2013-08-01 A | 2013-08-01 A | 64 | 100% | 2013-07-31 | 2013-07-31 | 0.5d |  | Gary Dolan [60%]; Michael McMorrow [60%]; Fergal Browne [60%]; Carmel Keegan [60%]; Elaine McLaughlin [60%] | 12.6h | 12.6h | 447 | 447 | 447 |
| 66 | 3.8 | CSP Production Account for Beta Customer |  | 17d | 2013-07-09 A | 2013-08-01 A | 42 | 100% | 2013-07-09 | 2013-08-01 | 17d |  | CSP Production Account [408 fixed rate hours] |  |  | 204 | 204 | 204 |
| 67 | 4 | **On going Support & Maintenance** |  | 89d | 2013-08-02 | 2013-12-06 |  |  | 2013-08-01 | 2013-12-06 | 90d | 0d |  | 356h |  | 13,219.6 | 13,356 |  |
| 68 | 4.1 | Website monitoring |  | 89d | 2013-08-02 | 2013-12-06 | 65 |  | 2013-08-01 | 2013-12-06 | 90d | 0d | Michael McMorrow [25%] | 178h |  | 6,230 | 6,300 |  |
| 69 | 4.2 | Cloud Hosting Costs |  | 89d | 2013-08-02 | 2013-12-06 | 65 |  | 2013-08-01 | 2013-12-06 | 90d | 0d | CSP Production Account [2160 fixed rate hours] |  |  | 1,080 | 1,080 |  |
| 70 | 4.3 | Bug fixing |  | 89d | 2013-08-02 | 2013-12-06 | 65 |  | 2013-08-01 | 2013-12-06 | 90d | 0d | Michael McMorrow [10%] | 71.2h |  | 2,492 | 2,520 |  |
| 71 | 4.4 | iOS Bug Fixing & Releases |  | 89d | 2013-08-02 | 2013-12-06 | 65 |  | 2013-08-01 | 2013-12-06 | 90d | 0d | Carmel Keegan [15%] | 106.8h |  | 3,417.6 | 3,456 |  |
| 72 | 5 | Project Close | milestone | 0d | 2013-12-06 | 2013-12-06 | 70 |  | 2013-12-06 | 2013-12-06 | 0d | 0d |  |  |  |  |  |  |

Notes:
- 68: Michael only to spend an average of 2 hours per day making sure that website is performing as intended
- 70: It is estimated that Michael will only spend on average 10% of his time fixing bugs on the web application
- 71: It is estimated that Carmel will only spend on average 15% of her time fixing bugs on the iOS application
